# SCVI_cronograma_01

Schedule from MS Project, 2021-11-21 to 2022-01-11, costs in R$, A marks actual dates.

## Calendars

- Padrão: Mon-Fri 09:00-12:00, 13:00-18:00; Sat-Sun off.

## Resources

| Resource | Rate |
| --- | --- |
| Robson | 150 |
| Rodrigo | 150 |
| João | 150 |
| GP Externo | 200 |
| Cliente |  |
| Matheus | 150 |
| Joa |  |

## Schedule

| ID | WBS | Task | Type | Duration | Start | Finish | Predecessors | Complete | Remaining | Baseline start | Baseline finish | Baseline duration | Total slack | Constraint | Resources | Work | Actual work | Cost | Baseline cost | Actual cost |
| --- | --- | --- | --- | --- | --- | --- | --- | --- | --- | --- | --- | --- | --- | --- | --- | --- | --- | --- | --- | --- |
| 1 | 1 | **Projeto SCVI** |  | 36.98d | 2021-11-21 09:00 A | 2022-01-11 17:50 |  | 82% | 6.69d | 2021-11-21 09:00 | 2022-01-11 17:50 | 36.98d | 0d |  |  | 249.5h | 188.8h | 37,358.33 | 40,208.33 | 28,770 |
| 2 | 1.1 | **Prospecção** |  | 36.98d | 2021-11-21 09:00 A | 2022-01-11 17:50 |  | 82% | 6.69d | 2021-11-21 09:00 | 2022-01-11 17:50 | 36.98d | 0d |  |  | 249.5h | 188.8h | 37,358.33 | 40,208.33 | 28,770 |
| 3 | 1.1.1 | **PTEC** |  | 3.62d | 2021-11-21 09:00 A | 2021-11-25 15:00 A |  | 100% |  | 2021-11-21 09:00 | 2021-11-25 15:00 | 3.62d |  |  |  | 7h | 7h | 1,050 | 3,900 | 1,050 |
| 4 | 1.1.1.1 | Estudar Domínio de Aplicação | manual | 0.25d | 2021-11-21 09:00 A | 2021-11-21 11:00 A |  | 100% |  | 2021-11-21 09:00 | 2021-11-21 18:00 | 1d |  |  | Robson | 2h | 2h | 300 | 1,200 | 300 |
| 5 | 1.1.1.2 | Reunir-se com Fornecedor de Requisitos | manual | 0.25d | 2021-11-22 09:00 A | 2021-11-22 11:00 A | 4 | 100% |  | 2021-11-22 09:00 | 2021-11-22 18:00 | 1d |  |  | Robson | 1h | 1h | 150 | 600 | 150 |
| 6 | 1.1.1.3 | Redigir Proposta Técnica | manual | 0.38d | 2021-11-23 09:00 A | 2021-11-23 12:00 A | 5 | 100% |  | 2021-11-23 09:00 | 2021-11-24 15:00 | 1.62d |  |  | João | 3h | 3h | 450 | 1,950 | 450 |
| 7 | 1.1.1.4 | Revisar Proposta Técnica | manual | 1d | 2021-11-24 15:00 A | 2021-11-25 15:00 A | 6 | 100% |  | 2021-11-24 15:00 | 2021-11-25 15:00 | 1d |  |  | Robson | 1h | 1h | 150 | 150 | 150 |
| 8 | 1.1.1.5 | Aprovar Proposta Técnica | milestone, manual | 0d | 2021-11-25 15:00 A | 2021-11-25 15:00 A | 7 | 100% |  | 2021-11-25 15:00 | 2021-11-25 15:00 | 0d |  |  | Cliente |  |  |  |  |  |
| 9 | 1.1.2 | **Est. Prel. Tam.** |  | 2d | 2021-11-25 15:00 A | 2021-11-29 15:00 A |  | 100% |  | 2021-11-25 15:00 | 2021-11-29 15:00 | 2d |  |  |  | 2h | 2h | 350 | 350 | 350 |
| 10 | 1.1.2.1 | Estimar Tamanho do Projeto | manual | 1d | 2021-11-25 15:00 A | 2021-11-26 15:00 A | 7 | 100% |  | 2021-11-25 15:00 | 2021-11-26 15:00 | 1d |  |  | Robson; Rodrigo | 1h | 1h | 150 | 150 | 150 |
| 11 | 1.1.2.2 | Revisar Estimativa de Tamanho do Projeto | manual | 1d | 2021-11-26 15:00 A | 2021-11-29 15:00 A | 10 | 100% |  | 2021-11-26 15:00 | 2021-11-29 15:00 | 1d |  |  | GP Externo | 1h | 1h | 200 | 200 | 200 |
| 12 | 1.1.3 | **Est. Prel. Cronograma e Orçamento** |  | 1d | 2021-11-29 15:00 A | 2021-11-30 15:00 A |  | 100% |  | 2021-11-29 15:00 | 2021-11-30 15:00 | 1d |  |  |  | 10h | 10h | 1,900 | 1,900 | 1,900 |
| 13 | 1.1.3.1 | Elaborar Cronograma e Orçamento Preliminares | manual | 1d | 2021-11-29 15:00 A | 2021-11-30 15:00 A | 9 | 100% |  | 2021-11-29 15:00 | 2021-11-30 15:00 | 1d |  |  | João | 2h | 2h | 300 | 300 | 300 |
| 14 | 1.1.3.2 | Revisar Cronograma e Orçamento Preliminares | manual | 1d | 2021-11-29 15:00 A | 2021-11-30 15:00 A | 11 | 100% |  | 2021-11-29 15:00 | 2021-11-30 15:00 | 1d |  |  | GP Externo | 8h | 8h | 1,600 | 1,600 | 1,600 |
| 15 | 1.1.4 | **Análise** |  | 3d | 2021-11-30 15:00 A | 2021-12-03 15:00 A |  | 100% |  | 2021-11-30 15:00 | 2021-12-03 15:00 | 3d |  |  |  | 35h | 35h | 5,250 | 5,250 | 5,250 |
| 16 | 1.1.4.1 | **Documento de Requisitos** |  | 3d | 2021-11-30 15:00 A | 2021-12-03 15:00 A |  | 100% |  | 2021-11-30 15:00 | 2021-12-03 15:00 | 3d |  |  |  | 27h | 27h | 4,050 | 4,050 | 4,050 |
| 17 | 1.1.4.1.1 | Reunir-se com o Cliente | manual | 1d | 2021-11-30 15:00 A | 2021-12-01 15:00 A | 12 | 100% |  | 2021-11-30 15:00 | 2021-12-01 15:00 | 1d |  |  | Robson | 8h | 8h | 1,200 | 1,200 | 1,200 |
| 18 | 1.1.4.1.2 | Elaborar DRE | manual | 1d | 2021-11-30 15:00 A | 2021-12-01 15:00 A | 13 | 100% |  | 2021-11-30 15:00 | 2021-12-01 15:00 | 1d |  |  | João | 8h | 8h | 1,200 | 1,200 | 1,200 |
| 19 | 1.1.4.1.3 | Revisar DRE | manual | 0.38d | 2021-11-30 15:00 A | 2021-11-30 18:00 A | 14 | 100% |  | 2021-11-30 15:00 | 2021-11-30 18:00 | 0.38d |  |  | Robson | 3h | 3h | 450 | 450 | 450 |
| 20 | 1.1.4.1.4 | Submeter para aprovação do Cliente | manual | 1d | 2021-12-01 15:00 A | 2021-12-03 15:00 A | 17 | 100% |  | 2021-12-01 15:00 | 2021-12-03 15:00 | 1d |  |  | Rodrigo | 8h | 8h | 1,200 | 1,200 | 1,200 |
| 21 | 1.1.4.2 | **MRB** |  | 1.38d | 2021-12-01 09:00 A | 2021-12-02 12:00 A |  | 100% |  | 2021-12-01 09:00 | 2021-12-02 12:00 | 1.38d |  |  |  | 8h | 8h | 1,200 | 1,200 | 1,200 |
| 22 | 1.1.4.2.1 | Elaborar MRB | manual | 0.75d | 2021-12-01 15:00 A | 2021-12-02 12:00 A | 18 | 100% |  | 2021-12-01 15:00 | 2021-12-02 12:00 | 0.75d |  |  | João | 6h | 6h | 900 | 900 | 900 |
| 23 | 1.1.4.2.2 | Revisar MRB | manual | 0.25d | 2021-12-01 09:00 A | 2021-12-02 10:30 A | 19 | 100% |  | 2021-12-01 09:00 | 2021-12-02 10:30 | 0.25d |  |  | Robson | 2h | 2h | 300 | 300 | 300 |
| 24 | 1.1.5 | **Projeto** |  | 6.06d | 2021-12-02 10:30 A | 2021-12-10 11:00 A |  | 100% |  | 2021-12-02 10:30 | 2021-12-10 11:00 | 6.06d |  |  |  | 26h | 26h | 3,900 | 3,900 | 3,900 |
| 25 | 1.1.5.1 | **Diagrama de Objetos** |  | 4.19d | 2021-12-03 16:30 A | 2021-12-09 18:00 A |  | 100% |  | 2021-12-03 16:30 | 2021-12-09 18:00 | 4.19d |  |  |  | 20h | 20h | 3,000 | 3,000 | 3,000 |
| 26 | 1.1.5.1.1 | Elaborar Diagrama de Objetos |  | 2d | 2021-12-03 16:30 A | 2021-12-07 16:30 A | 20 | 100% |  | 2021-12-03 16:30 | 2021-12-07 16:30 | 2d |  |  | Matheus | 16h | 16h | 2,400 | 2,400 | 2,400 |
| 27 | 1.1.5.1.2 | Revisar Diagrama de Objetos | manual | 0.25d | 2021-12-08 09:00 A | 2021-12-08 11:00 A | 21 | 100% |  | 2021-12-08 09:00 | 2021-12-08 11:00 | 0.25d |  |  | João | 2h | 2h | 300 | 300 | 300 |
| 28 | 1.1.5.1.3 | Atualizar MRB |  | 1d | 2021-12-09 09:00 A | 2021-12-09 18:00 A |  | 100% |  | 2021-12-09 09:00 | 2021-12-09 18:00 | 1d |  | start no earlier than 2021-12-09 09:00 | Rodrigo [25%] | 2h | 2h | 300 | 300 | 300 |

| ID | WBS | Task | Type | Duration | Start | Finish | Predecessors | Complete | Remaining | Baseline start | Baseline finish | Baseline duration | Total slack | Resources | Work | Actual work | Cost | Baseline cost | Actual cost |
| --- | --- | --- | --- | --- | --- | --- | --- | --- | --- | --- | --- | --- | --- | --- | --- | --- | --- | --- | --- |
| 29 | 1.1.5.2 | **Modelo de Grafos** |  | 6.06d | 2021-12-02 10:30 A | 2021-12-10 11:00 A |  | 100% |  | 2021-12-02 10:30 | 2021-12-10 11:00 | 6.06d |  |  | 6h | 6h | 900 | 900 | 900 |
| 30 | 1.1.5.2.1 | Elaborar MG | manual | 0.5d | 2021-12-02 10:30 A | 2021-12-02 15:30 A | 23 | 100% |  | 2021-12-02 10:30 | 2021-12-02 15:30 | 0.5d |  | Matheus | 4h | 4h | 600 | 600 | 600 |
| 31 | 1.1.5.2.2 | Revisar MG | manual | 0.25d | 2021-12-10 09:00 A | 2021-12-10 11:00 A | 25 | 100% |  | 2021-12-10 09:00 | 2021-12-10 11:00 | 0.25d |  | João | 2h | 2h | 300 | 300 | 300 |
| 32 | 1.1.6 | **Desenvolvimento** |  | 15.56d | 2021-12-07 16:30 A | 2021-12-29 12:00 |  | 68% | 4.97d | 2021-12-07 16:30 | 2021-12-29 12:00 | 15.56d | 0d |  | 146.5h | 103.5h | 21,975 | 21,975 | 15,525 |
| 33 | 1.1.6.1 | **Release 01** |  | 8.62d | 2021-12-07 16:30 A | 2021-12-20 13:30 |  | 43% | 4.93d | 2021-12-07 16:30 | 2021-12-20 13:30 | 8.62d | 0d |  | 57.5h | 23.5h | 8,625 | 8,625 | 3,525 |
| 34 | 1.1.6.1.1 | **Implementação** |  | 8.62d | 2021-12-07 16:30 A | 2021-12-20 13:30 |  | 43% | 4.93d | 2021-12-07 16:30 | 2021-12-20 13:30 | 8.62d | 0d |  | 57.5h | 23.5h | 8,625 | 8,625 | 3,525 |
| 35 | 1.1.6.1.1.1 | **Implementação - Manter Usuário** |  | 4.31d | 2021-12-07 16:30 | 2021-12-14 10:00 |  |  |  | 2021-12-07 16:30 | 2021-12-14 10:00 | 4.31d | 0d |  | 23h |  | 3,450 | 3,450 |  |
| 36 | 1.1.6.1.1.1.1 | Implementação RFS Cadastrar Usuário | manual | 0.31d | 2021-12-07 16:30 | 2021-12-08 10:00 | 26 |  |  | 2021-12-07 16:30 | 2021-12-08 10:00 | 0.31d |  | Robson; Matheus | 5h |  | 750 | 750 |  |
| 37 | 1.1.6.1.1.1.2 | Implementação RFS Consultar Usuário | manual | 0.5d | 2021-12-08 11:00 | 2021-12-08 16:00 | 27 |  |  | 2021-12-08 11:00 | 2021-12-08 16:00 | 0.5d |  | Rodrigo | 4h |  | 600 | 600 |  |
| 38 | 1.1.6.1.1.1.3 | Implementação RFS Alterar Usuário | manual | 0.44d | 2021-12-10 15:00 | 2021-12-13 09:30 | 28 |  |  | 2021-12-10 15:00 | 2021-12-13 09:30 | 0.44d |  | Robson; Matheus | 7h |  | 1,050 | 1,050 |  |
| 39 | 1.1.6.1.1.1.4 | Implementação RFS Remover Usuário | manual | 0.88d | 2021-12-10 16:00 | 2021-12-14 10:00 | 29 |  |  | 2021-12-10 16:00 | 2021-12-14 10:00 | 0.88d |  | Rodrigo | 7h |  | 1,050 | 1,050 |  |
| 40 | 1.1.6.1.1.2 | **Implementação - Manter Corretor** |  | 4.88d | 2021-12-08 09:00 A | 2021-12-14 17:00 A |  | 100% |  | 2021-12-08 09:00 | 2021-12-14 17:00 | 4.88d |  |  | 16h | 16h | 2,400 | 2,400 | 2,400 |
| 41 | 1.1.6.1.1.2.1 | Implementação RFS Cadastrar Corretor | manual | 0.31d | 2021-12-08 09:00 A | 2021-12-08 11:30 A | 30 | 100% |  | 2021-12-08 09:00 | 2021-12-08 11:30 | 0.31d |  | Robson; Matheus | 5h | 5h | 750 | 750 | 750 |
| 42 | 1.1.6.1.1.2.2 | Implementação RFS Consultar Corretor | manual | 0.5d | 2021-12-10 11:00 A | 2021-12-10 16:00 A | 31 | 100% |  | 2021-12-10 11:00 | 2021-12-10 16:00 | 0.5d |  | Rodrigo | 4h | 4h | 600 | 600 | 600 |
| 43 | 1.1.6.1.1.2.3 | Implementação RFS Alterar Corretor | manual | 0.88d | 2021-12-08 16:00 A | 2021-12-14 17:00 A | 37 | 100% |  | 2021-12-08 16:00 | 2021-12-14 17:00 | 0.88d |  | Rodrigo; Matheus | 7h | 7h | 1,050 | 1,050 | 1,050 |
| 44 | 1.1.6.1.1.3 | **Teste - Manter Usuário** |  | 2.44d | 2021-12-13 09:30 | 2021-12-15 14:00 |  |  |  | 2021-12-13 09:30 | 2021-12-15 14:00 | 2.44d | 0d |  | 11h |  | 1,650 | 1,650 |  |
| 45 | 1.1.6.1.1.3.1 | Teste RFS Cadastrar Usuário | manual | 0.25d | 2021-12-13 09:30 | 2021-12-13 16:00 | 38 |  |  | 2021-12-13 09:30 | 2021-12-13 16:00 | 0.25d |  | João | 2h |  | 300 | 300 |  |
| 46 | 1.1.6.1.1.3.2 | Teste RFS Consultar Usuário | manual | 0.38d | 2021-12-14 10:00 | 2021-12-15 10:00 | 39 |  |  | 2021-12-14 10:00 | 2021-12-15 10:00 | 0.38d |  | Rodrigo | 3h |  | 450 | 450 |  |
| 47 | 1.1.6.1.1.3.3 | Teste RFS Alterar Usuário | manual | 0.25d | 2021-12-14 17:00 | 2021-12-15 10:30 | 40 |  |  | 2021-12-14 17:00 | 2021-12-15 10:30 | 0.25d |  | João | 2h |  | 300 | 300 |  |
| 48 | 1.1.6.1.1.3.4 | Teste RFS Remover Usuário | manual | 0.5d | 2021-12-15 09:00 | 2021-12-15 14:00 | 41 |  |  | 2021-12-15 09:00 | 2021-12-15 14:00 | 0.5d |  | Matheus | 4h |  | 600 | 600 |  |
| 49 | 1.1.6.1.1.4 | **Teste - Manter Corretor** |  | 4.25d | 2021-12-14 10:30 A | 2021-12-20 13:30 A |  | 100% |  | 2021-12-14 10:30 | 2021-12-20 13:30 | 4.25d |  |  | 7.5h | 7.5h | 1,125 | 1,125 | 1,125 |
| 50 | 1.1.6.1.1.4.1 | Teste RFS Cadastrar Corretor | manual | 0.25d | 2021-12-14 10:30 A | 2021-12-14 13:30 A | 42 | 100% |  | 2021-12-14 10:30 | 2021-12-14 13:30 | 0.25d |  | João | 2h | 2h | 300 | 300 | 300 |
| 51 | 1.1.6.1.1.4.2 | Teste RFS Consultar Corretor | manual | 0.19d | 2021-12-14 17:00 A | 2021-12-15 09:30 A | 43 | 100% |  | 2021-12-14 17:00 | 2021-12-15 09:30 | 0.19d |  | João | 1.5h | 1.5h | 225 | 225 | 225 |
| 52 | 1.1.6.1.1.4.3 | Teste RFS Alterar Corretor | manual | 0.5d | 2021-12-17 09:00 A | 2021-12-20 13:30 A | 44 | 100% |  | 2021-12-17 09:00 | 2021-12-20 13:30 | 0.5d |  | Robson | 4h | 4h | 600 | 600 | 600 |

| ID | WBS | Task | Type | Duration | Start | Finish | Predecessors | Complete | Remaining | Baseline start | Baseline finish | Baseline duration | Total slack | Resources | Work | Actual work | Cost | Baseline cost | Actual cost |
| --- | --- | --- | --- | --- | --- | --- | --- | --- | --- | --- | --- | --- | --- | --- | --- | --- | --- | --- | --- |
| 53 | 1.1.6.2 | **Release 02** |  | 10.94d | 2021-12-14 13:30 A | 2021-12-29 12:00 |  | 88% | 1.26d | 2021-12-14 13:30 | 2021-12-29 12:00 | 10.94d | 0d |  | 89h | 80h | 13,350 | 13,350 | 12,000 |
| 54 | 1.1.6.2.1 | **Implementação** |  | 10.94d | 2021-12-14 13:30 A | 2021-12-29 12:00 |  | 88% | 1.26d | 2021-12-14 13:30 | 2021-12-29 12:00 | 10.94d | 0d |  | 89h | 80h | 13,350 | 13,350 | 12,000 |
| 55 | 1.1.6.2.1.1 | **Implementação - Manter Imóvel à Venda** |  | 6.44d | 2021-12-15 10:00 A | 2021-12-23 14:30 A |  | 100% |  | 2021-12-15 10:00 | 2021-12-23 14:30 | 6.44d |  |  | 23h | 23h | 3,450 | 3,450 | 3,450 |
| 56 | 1.1.6.2.1.1.1 | Implementação RFS Cadastrar Imóvel | manual | 0.31d | 2021-12-15 10:00 A | 2021-12-15 13:30 A | 46 | 100% |  | 2021-12-15 10:00 | 2021-12-15 13:30 | 0.31d |  | Robson; Rodrigo | 5h | 5h | 750 | 750 | 750 |
| 57 | 1.1.6.2.1.1.2 | Implementação RFS Consultar Imóvel | manual | 0.5d | 2021-12-17 09:00 A | 2021-12-20 14:30 A | 47 | 100% |  | 2021-12-17 09:00 | 2021-12-20 14:30 | 0.5d |  | Matheus; Rodrigo | 4h | 4h | 600 | 600 | 600 |
| 58 | 1.1.6.2.1.1.3 | Implementação RFS Alterar Imóvel | manual | 0.56d | 2021-12-20 09:00 A | 2021-12-23 14:30 A | 48 | 100% |  | 2021-12-20 09:00 | 2021-12-23 14:30 | 0.56d |  | Robson; Matheus | 7h | 7h | 1,050 | 1,050 | 1,050 |
| 59 | 1.1.6.2.1.1.4 | Implementação RFS Remover Imóvel | manual | 0.44d | 2021-12-20 13:30 A | 2021-12-20 17:00 A | 49 | 100% |  | 2021-12-20 13:30 | 2021-12-20 17:00 | 0.44d |  | Matheus; Rodrigo | 7h | 7h | 1,050 | 1,050 | 1,050 |
| 60 | 1.1.6.2.1.2 | **Implementação - Manter Venda** |  | 0.88d | 2021-12-14 13:30 A | 2021-12-15 11:30 A |  | 100% |  | 2021-12-14 13:30 | 2021-12-15 11:30 | 0.88d |  |  | 9h | 9h | 1,350 | 1,350 | 1,350 |
| 61 | 1.1.6.2.1.2.1 | Implementação RFS Cadastrar Venda | manual | 0.62d | 2021-12-14 13:30 A | 2021-12-15 09:30 A | 50 | 100% |  | 2021-12-14 13:30 | 2021-12-15 09:30 | 0.62d |  | Rodrigo | 5h | 5h | 750 | 750 | 750 |
| 62 | 1.1.6.2.1.2.2 | Implementação RFS Consultar Venda | manual | 0.25d | 2021-12-15 09:30 A | 2021-12-15 11:30 A | 51 | 100% |  | 2021-12-15 09:30 | 2021-12-15 11:30 | 0.25d |  | Matheus; Robson | 4h | 4h | 600 | 600 | 600 |
| 63 | 1.1.6.2.1.3 | **Teste - Manter Imóvel à Venda** |  | 6.12d | 2021-12-15 16:30 A | 2021-12-23 17:30 A |  | 100% |  | 2021-12-15 16:30 | 2021-12-23 17:30 | 6.12d |  |  | 15h | 15h | 2,250 | 2,250 | 2,250 |
| 64 | 1.1.6.2.1.3.1 | Teste RFS Cadastrar Imóvel | manual | 0.5d | 2021-12-20 13:30 A | 2021-12-21 15:00 A | 52 | 100% |  | 2021-12-20 13:30 | 2021-12-21 15:00 | 0.5d |  | João | 4h | 4h | 600 | 600 | 600 |
| 65 | 1.1.6.2.1.3.2 | Teste RFS Consultar Imóvel | manual | 0.38d | 2021-12-23 14:30 A | 2021-12-23 17:30 A | 55 | 100% |  | 2021-12-23 14:30 | 2021-12-23 17:30 | 0.38d |  | João | 3h | 3h | 450 | 450 | 450 |
| 66 | 1.1.6.2.1.3.3 | Teste RFS Alterar Imóvel | manual | 0.5d | 2021-12-15 16:30 A | 2021-12-16 11:30 A | 56 | 100% |  | 2021-12-15 16:30 | 2021-12-16 11:30 | 0.5d |  | João | 4h | 4h | 600 | 600 | 600 |
| 67 | 1.1.6.2.1.3.4 | Teste RFS Remover Imóvel | manual | 0.5d | 2021-12-20 14:30 A | 2021-12-21 09:30 A | 57 | 100% |  | 2021-12-20 14:30 | 2021-12-21 09:30 | 0.5d |  | João | 4h | 4h | 600 | 600 | 600 |
| 68 | 1.1.6.2.1.4 | **Teste - Manter Corretor** |  | 3.19d | 2021-12-20 17:00 A | 2021-12-24 09:30 |  | 80% | 0.64d | 2021-12-20 17:00 | 2021-12-24 09:30 | 3.19d | 0d |  | 7h | 4h | 1,050 | 1,050 | 600 |
| 69 | 1.1.6.2.1.4.1 | Teste RFS Cadastrar Venda | manual | 0.5d | 2021-12-23 14:30 A | 2021-12-24 09:30 A | 58 | 100% |  | 2021-12-23 14:30 | 2021-12-24 09:30 | 0.5d |  | João | 4h | 4h | 600 | 600 | 600 |
| 70 | 1.1.6.2.1.4.2 | Teste RFS Consultar Venda | manual | 0.12d | 2021-12-20 17:00 | 2021-12-20 18:00 | 59 |  |  | 2021-12-20 17:00 | 2021-12-20 18:00 | 0.12d |  | Robson; Matheus; Rodrigo | 3h |  | 450 | 450 |  |
| 71 | 1.1.6.2.1.5 | **Implementação - Relatório de Salários e Comissões** |  | 0.33d | 2021-12-24 09:00 A | 2021-12-24 11:40 A |  | 100% |  | 2021-12-24 09:00 | 2021-12-24 11:40 | 0.33d |  |  | 8h | 8h | 1,200 | 1,200 | 1,200 |
| 72 | 1.1.6.2.1.5.1 | Implementação RFS Relatório de Salários e Comissões | manual | 0.33d | 2021-12-24 09:00 A | 2021-12-24 11:40 A | 60 | 100% |  | 2021-12-24 09:00 | 2021-12-24 11:40 | 0.33d |  | Robson; Matheus; Rodrigo | 8h | 8h | 1,200 | 1,200 | 1,200 |
| 73 | 1.1.6.2.1.6 | **Teste - Relatório de Salários e Comissões** |  | 0.75d | 2021-12-27 09:00 | 2021-12-27 16:00 |  |  |  | 2021-12-27 09:00 | 2021-12-27 16:00 | 0.75d | 0d |  | 6h |  | 900 | 900 |  |
| 74 | 1.1.6.2.1.6.1 | Teste RFS Relatório de Salários e Comissões | manual | 0.75d | 2021-12-27 09:00 | 2021-12-27 16:00 | 61 |  |  | 2021-12-27 09:00 | 2021-12-27 16:00 | 0.75d |  | João | 6h |  | 900 | 900 |  |
| 75 | 1.1.6.2.1.7 | **Implementação - Relatório Gerencial** |  | 0.94d | 2021-12-28 09:00 A | 2021-12-28 17:30 A |  | 100% |  | 2021-12-28 09:00 | 2021-12-28 17:30 | 0.94d |  |  | 15h | 15h | 2,250 | 2,250 | 2,250 |
| 76 | 1.1.6.2.1.7.1 | Implementação RFS Relatório Gerencial | manual | 0.94d | 2021-12-28 09:00 A | 2021-12-28 17:30 A | 62 | 100% |  | 2021-12-28 09:00 | 2021-12-28 17:30 | 0.94d |  | Robson; Matheus | 15h | 15h | 2,250 | 2,250 | 2,250 |

| ID | WBS | Task | Type | Duration | Start | Finish | Predecessors | Complete | Remaining | Baseline start | Baseline finish | Baseline duration | Total slack | Resources | Work | Actual work | Cost | Baseline cost | Actual cost |
| --- | --- | --- | --- | --- | --- | --- | --- | --- | --- | --- | --- | --- | --- | --- | --- | --- | --- | --- | --- |
| 77 | 1.1.6.2.1.8 | **Teste - Relatório Gerencial** |  | 0.38d | 2021-12-29 09:00 A | 2021-12-29 12:00 A |  | 100% |  | 2021-12-29 09:00 | 2021-12-29 12:00 | 0.38d |  |  | 6h | 6h | 900 | 900 | 900 |
| 78 | 1.1.6.2.1.8.1 | Teste RFS Relatório Gerencial | manual | 0.38d | 2021-12-29 09:00 A | 2021-12-29 12:00 A | 63 | 100% |  | 2021-12-29 09:00 | 2021-12-29 12:00 | 0.38d |  | Rodrigo; João | 6h | 6h | 900 | 900 | 900 |
| 79 | 1.1.7 | **Monitoramento e Controle** |  | 0.75d | 2021-12-30 09:00 A | 2021-12-30 16:00 |  | 75% | 0.19d | 2021-12-30 09:00 | 2021-12-30 16:00 | 0.75d | 0d |  | 6h | 4.5h | 900 | 900 | 675 |
| 80 | 1.1.7.1 | Acompanhar Projeto | manual | 0.75d | 2021-12-30 09:00 A | 2021-12-30 16:00 | 64 | 75% | 0.19d | 2021-12-30 09:00 | 2021-12-30 16:00 | 0.75d |  | Robson | 6h | 4.5h | 900 | 900 | 675 |
| 81 | 1.1.8 | **Gerência de Configuração** |  | 2.5d | 2021-12-30 09:00 A | 2022-01-03 14:00 |  | 16% | 2.1d | 2021-12-30 09:00 | 2022-01-03 14:00 | 2.5d | 0d |  | 5h | 0.8h | 750 | 750 | 120 |
| 82 | 1.1.8.1 | Elaborar Branch | manual | 0.12d | 2021-12-30 09:00 A | 2021-12-30 10:00 | 65 | 80% | 0.03d | 2021-12-30 09:00 | 2021-12-30 10:00 | 0.12d |  | Matheus | 1h | 0.8h | 150 | 150 | 120 |
| 83 | 1.1.8.2 | Realizar Merge da Branch para a Trunk | manual | 0.5d | 2022-01-03 09:00 | 2022-01-03 14:00 | 66 |  |  | 2022-01-03 09:00 | 2022-01-03 14:00 | 0.5d |  | Rodrigo | 4h |  | 600 | 600 |  |
| 84 | 1.1.9 | **Fase de Fechamento** |  | 6.98d | 2022-01-03 09:00 | 2022-01-11 17:50 |  |  |  | 2022-01-03 09:00 | 2022-01-11 17:50 | 6.98d | 0d |  | 12h |  | 1,283.33 | 1,283.33 |  |
| 85 | 1.1.9.1 | Fase 1 | manual | 0.12d | 2022-01-03 09:00 | 2022-01-03 10:00 | 67 |  |  | 2022-01-03 09:00 | 2022-01-03 10:00 | 0.12d |  | Robson; Cliente | 4h |  | 300 | 300 |  |
| 86 | 1.1.9.2 | Fase 2 | manual | 0.06d | 2022-01-06 09:00 | 2022-01-06 09:30 | 68 |  |  | 2022-01-06 09:00 | 2022-01-06 09:30 | 0.06d |  | Robson; Matheus; Rodrigo; Cliente | 4h |  | 450 | 450 |  |
| 87 | 1.1.9.3 | Fase 3 | manual | 1.98d | 2022-01-10 09:00 | 2022-01-11 17:50 | 69 |  |  | 2022-01-10 09:00 | 2022-01-11 17:50 | 1.98d |  | Robson; Matheus; Rodrigo; João; Cliente; GP Externo | 4h |  | 533.33 | 533.33 |  |
